Task ID,Task Name,Start Date,End Date,Duration (Days),Phase,Owner/Team,Milestone,Dependencies,Status,Completion %,Key Deliverables
1.0,PROJECT KICKOFF,2025-10-20,2025-10-20,1,Initiation,Project Team,Yes,,Planned,0%,Project charter and team alignment
2.0,PHASE 1: FOUNDATION & INFRASTRUCTURE,2025-10-20,2025-10-26,7,Foundation,Development Team,Yes,,Planned,0%,Secure platform foundation
2.1,User Authentication System,2025-10-20,2025-10-22,3,Foundation,Backend Team,No,,Planned,0%,"Clerk authentication, user management"
2.2,Database Setup & Security,2025-10-22,2025-10-23,2,Foundation,System Architect,No,2.1,Planned,0%,Supabase database with security policies
2.3,API Security & Middleware,2025-10-24,2025-10-25,2,Foundation,Backend Team,No,2.2,Planned,0%,Protected API endpoints
2.4,Core Agent Framework,2025-10-25,2025-10-26,2,Foundation,Backend Team,No,2.3,Planned,0%,Base AI agent architecture
2.5,Phase 1 Testing & Validation,2025-10-26,2025-10-26,1,Foundation,QA Team,No,2.4,Planned,0%,Authentication and security validation
3.0,PHASE 1 MILESTONE: SECURE FOUNDATION COMPLETE,2025-10-26,2025-10-26,1,Foundation,Project Manager,Yes,2.5,Planned,0%,✓ Authentication working ✓ Database secured
4.0,PHASE 2: AI AGENTS & INTEGRATIONS,2025-10-27,2025-11-02,7,Core Development,Development Team,Yes,3.0,Planned,0%,Operational AI agent system
4.1,External Service Integrations,2025-10-27,2025-10-29,3,Core Development,Integration Team,No,3.0,Planned,0%,"Avinode, Gmail, Google Sheets APIs"
4.2,RFP Orchestrator Agent,2025-10-30,2025-10-30,1,Core Development,Backend Team,No,4.1,Planned,0%,Main workflow coordinator
4.3,Client Data Manager Agent,2025-10-31,2025-10-31,1,Core Development,Backend Team,No,4.1,Planned,0%,Client profile and history management
4.4,Flight Search Agent,2025-11-01,2025-11-01,1,Core Development,Backend Team,No,4.1,Planned,0%,Aircraft search and availability
4.5,Phase 2 Integration Testing,2025-11-02,2025-11-02,1,Core Development,QA Team,No,"4.2,4.3,4.4",Planned,0%,Agent communication validation
5.0,PHASE 2 MILESTONE: CORE AI AGENTS OPERATIONAL,2025-11-02,2025-11-02,1,Core Development,Project Manager,Yes,4.5,Planned,0%,✓ 3 agents working ✓ External integrations live
6.0,PHASE 3: ADVANCED WORKFLOW & AUTOMATION,2025-11-03,2025-11-09,7,Advanced Development,Development Team,Yes,5.0,Planned,0%,Complete automated RFP workflow
6.1,Proposal Analysis Agent,2025-11-03,2025-11-03,1,Advanced Development,Backend Team,No,5.0,Planned,0%,Intelligent proposal scoring
6.2,Communication Manager Agent,2025-11-04,2025-11-04,1,Advanced Development,Backend Team,No,5.0,Planned,0%,Automated client communications
6.3,Error Monitoring Agent,2025-11-05,2025-11-05,1,Advanced Development,Backend Team,No,5.0,Planned,0%,Self-healing error detection
6.4,Workflow Orchestration System,2025-11-06,2025-11-06,1,Advanced Development,System Architect,No,"6.1,6.2,6.3",Planned,0%,State machine and task coordination
6.5,Background Job Processing,2025-11-07,2025-11-07,1,Advanced Development,DevOps Team,No,6.4,Planned,0%,Scalable async task processing
6.6,End-to-End Workflow Testing,2025-11-08,2025-11-09,2,Advanced Development,QA Team,No,6.5,Planned,0%,Complete RFP flow validation
7.0,PHASE 3 MILESTONE: COMPLETE AI SYSTEM LIVE,2025-11-09,2025-11-09,1,Advanced Development,Project Manager,Yes,6.6,Planned,0%,✓ All 6 agents working ✓ Full automation ready
8.0,PHASE 4: USER INTERFACE & EXPERIENCE,2025-11-10,2025-11-16,7,Frontend Development,Frontend Team,Yes,7.0,Planned,0%,Complete user-facing application
8.1,Authenticated User Interface,2025-11-10,2025-11-11,2,Frontend Development,Frontend Team,No,7.0,Planned,0%,Secure login and user dashboard
8.2,Real-time Status Updates,2025-11-11,2025-11-12,2,Frontend Development,Frontend Team,No,8.1,Planned,0%,Live quote and request tracking
8.3,Request Submission Workflow,2025-11-12,2025-11-13,2,Frontend Development,Frontend Team,No,8.2,Planned,0%,User-friendly RFP creation
8.4,Quote Review & PDF Generation,2025-11-13,2025-11-14,2,Frontend Development,Full Stack Team,No,8.3,Planned,0%,Proposal viewing with PDF download
8.5,UI/UX Polish & Accessibility,2025-11-15,2025-11-16,2,Frontend Development,Frontend Team,No,8.4,Planned,0%,Professional interface and WCAG compliance
8.6,Frontend Testing Suite,2025-11-15,2025-11-16,2,Frontend Development,QA Team,No,8.4,Planned,0%,Automated UI testing with Playwright
9.0,PHASE 4 MILESTONE: USER INTERFACE COMPLETE,2025-11-16,2025-11-16,1,Frontend Development,Project Manager,Yes,"8.5,8.6",Planned,0%,✓ Full UI functional ✓ PDF generation ready
10.0,PHASE 5: QUALITY ASSURANCE & OPTIMIZATION,2025-11-17,2025-11-23,7,Testing & QA,QA Team,Yes,9.0,Planned,0%,Production-ready quality
10.1,Comprehensive Test Coverage,2025-11-17,2025-11-18,2,Testing & QA,QA Team,No,9.0,Planned,0%,80%+ unit and integration test coverage
10.2,Load & Performance Testing,2025-11-19,2025-11-19,1,Testing & QA,QA Team,No,10.1,Planned,0%,100+ concurrent user validation
10.3,API Performance Optimization,2025-11-20,2025-11-20,1,Testing & QA,Backend Team,No,10.2,Planned,0%,Sub-2 second response times
10.4,Database Query Optimization,2025-11-21,2025-11-21,1,Testing & QA,Backend Team,No,10.3,Planned,0%,Efficient data access patterns
10.5,Security Audit & Penetration Testing,2025-11-22,2025-11-22,1,Testing & QA,Security Team,No,10.4,Planned,0%,Vulnerability assessment and fixes
10.6,Bug Fix Sprint,2025-11-23,2025-11-23,1,Testing & QA,All Teams,No,10.5,Planned,0%,Issue resolution from testing
11.0,PHASE 5 MILESTONE: PRODUCTION-READY QUALITY,2025-11-23,2025-11-23,1,Testing & QA,Project Manager,Yes,10.6,Planned,0%,✓ Performance optimized ✓ Security validated
12.0,PHASE 6: PRODUCTION DEPLOYMENT PREP,2025-11-24,2025-11-30,7,Deployment,DevOps Team,Yes,11.0,Planned,0%,Launch-ready infrastructure
12.1,Monitoring & Alerting Setup,2025-11-24,2025-11-25,2,Deployment,DevOps Team,No,11.0,Planned,0%,Sentry error tracking and dashboards
12.2,CI/CD Pipeline Configuration,2025-11-26,2025-11-26,1,Deployment,DevOps Team,No,12.1,Planned,0%,Automated deployment workflows
12.3,Staging Environment Deployment,2025-11-27,2025-11-27,1,Deployment,DevOps Team,No,12.2,Planned,0%,Pre-production environment setup
12.4,User Acceptance Testing (UAT),2025-11-28,2025-11-28,1,Deployment,Business Team,No,12.3,Planned,0%,Stakeholder validation on staging
12.5,Production Deployment Preparation,2025-11-29,2025-11-29,1,Deployment,DevOps Team,No,12.4,Planned,0%,Final environment configuration
12.6,Pre-Launch Checklist & Validation,2025-11-30,2025-11-30,1,Deployment,All Teams,No,12.5,Planned,0%,Go/no-go decision gate
13.0,PHASE 6 MILESTONE: READY FOR LAUNCH,2025-11-30,2025-11-30,1,Deployment,Project Manager,Yes,12.6,Planned,0%,✓ Monitoring live ✓ UAT passed
14.0,PHASE 7: PRODUCTION LAUNCH,2025-12-01,2025-12-07,7,Launch,All Teams,Yes,13.0,Planned,0%,System live in production
14.1,Production Deployment,2025-12-01,2025-12-01,1,Launch,DevOps Team,No,13.0,Planned,0%,Go-live to production environment
14.2,Launch Day Monitoring,2025-12-01,2025-12-01,1,Launch,All Teams,No,14.1,Planned,0%,24/7 team coverage
14.3,Early User Onboarding,2025-12-02,2025-12-04,3,Launch,Support Team,No,14.2,Planned,0%,Pilot user group activation
14.4,Performance Monitoring & Tuning,2025-12-02,2025-12-07,6,Launch,DevOps Team,No,14.2,Planned,0%,Real-world optimization
14.5,User Feedback Collection,2025-12-05,2025-12-07,3,Launch,Product Team,No,14.3,Planned,0%,Gather early user insights
14.6,Issue Triage & Hot Fixes,2025-12-01,2025-12-07,7,Launch,Development Team,No,14.1,Planned,0%,Rapid response to production issues
15.0,PROJECT MILESTONE: PRODUCTION LAUNCH COMPLETE,2025-12-07,2025-12-07,1,Launch,Project Manager,Yes,"14.4,14.5,14.6",Planned,0%,✓ System live ✓ Users onboarded ✓ Stable operation
16.0,POST-LAUNCH SUPPORT & ITERATION,2025-12-08,2025-12-14,7,Post-Launch,All Teams,No,15.0,Planned,0%,Continuous improvement
16.1,Week 1 Performance Review,2025-12-08,2025-12-14,7,Post-Launch,All Teams,No,15.0,Planned,0%,Metrics analysis and optimization
16.2,Feature Enhancement Planning,2025-12-08,2025-12-14,7,Post-Launch,Product Team,No,15.0,Planned,0%,Roadmap for future iterations
17.0,PROJECT COMPLETION & HANDOFF,2025-12-14,2025-12-14,1,Closure,Project Manager,Yes,"16.1,16.2",Planned,0%,✓ Handoff to operations team
