Task ID,Task Name,Start Date,End Date,Duration (Days),Phase,Owner/Team,Milestone,Dependencies,Status,Completion %,Key Deliverables
1,PROJECT KICKOFF,2025-10-17,2025-10-20,1,Initiation,Project Team,Yes,,Complete,100%,Project charter and team alignment
2,PHASE 1: FOUNDATION & INFRASTRUCTURE,2025-10-20,2025-11-08,19,Foundation,Development Team,Yes,,Complete,100%,Secure platform foundation (extended due to database work)
2.1,User Authentication System,2025-10-20,2025-10-22,3,Foundation,Backend Team,No,,Complete,100%,"Clerk authentication, user management"
2.2,Database Setup & Security,2025-10-22,2025-10-23,2,Foundation,System Architect,No,2.1,Complete,100%,Supabase database with security policies
2.3,API Security & Middleware,2025-10-24,2025-10-25,2,Foundation,Backend Team,No,2.2,Complete,100%,Protected API endpoints
2.4,Core Agent Framework,2025-10-25,2025-10-26,2,Foundation,Backend Team,No,2.3,Complete,100%,Base AI agent architecture
2.5,Phase 1 Testing & Validation,2025-10-26,2025-10-26,1,Foundation,QA Team,No,2.4,Complete,100%,Authentication and security validation
2.6,Database Schema Migration,2025-11-01,2025-11-08,8,Foundation,Backend Team,No,2.2,Complete,100%,"Complete schema with iso_agents, requests, quotes, workflows, agents, clients tables (PR #22 merged)"
2.6.1,9 Database Migrations,2025-11-01,2025-11-08,8,Foundation,Backend Team,No,2.6,Complete,100%,"Migrations 001-009: schema, RLS, seed data, proposals, user roles, foreign keys"
2.6.2,24 RLS Policies,2025-11-05,2025-11-08,4,Foundation,Backend Team,No,2.6.1,Complete,100%,Multi-tenant isolation and role-based access control
3,PHASE 1 MILESTONE: SECURE FOUNDATION COMPLETE,2025-11-08,2025-11-08,1,Foundation,Project Manager,Yes,"2.5,2.6",Complete,100%,✓ Authentication working ✓ Database complete with 24 RLS policies
4,PHASE 2: AI AGENTS & INTEGRATIONS,2025-10-27,2025-11-15,20,Core Development,Development Team,Yes,3,In Progress,75%,Operational AI agent system with 6 agents implemented
4.1,MCP Base Server Infrastructure,2025-10-27,2025-10-27,1,Core Development,Integration Team,No,3,Complete,100%,Core MCP server framework and utilities
4.1.1,Avinode MCP Server,2025-10-27,2025-10-28,1,Core Development,Integration Team,No,4.1,Complete,100%,Flight search and RFP management (6 tools implemented - awaiting sandbox)
4.1.2,Gmail MCP Server,2025-10-28,2025-10-28,1,Core Development,Integration Team,No,4.1,Complete,100%,Email sending and template management (code complete - awaiting credentials)
4.1.3,Google Sheets MCP Server,2025-10-28,2025-10-29,1,Core Development,Integration Team,No,4.1,Complete,100%,Client data retrieval and updates (code complete - awaiting credentials)
4.1.4,Supabase MCP Server,2025-10-29,2025-10-29,1,Core Development,Integration Team,No,4.1,Complete,100%,Database operations via MCP protocol
4.2,RFP Orchestrator Agent,2025-10-30,2025-11-05,6,Core Development,Backend Team,No,"4.1.1,4.1.2,4.1.3",Complete,100%,Main workflow coordinator with task delegation
4.3,Client Data Manager Agent,2025-10-31,2025-11-06,6,Core Development,Backend Team,No,"4.1.1,4.1.2,4.1.3",Complete,100%,Client profile and history management with Sheets integration
4.4,Flight Search Agent,2025-11-01,2025-11-07,7,Core Development,Backend Team,No,4.1.1,Complete,100%,Aircraft search via Avinode with filtering and ranking
4.5,Proposal Analysis Agent,2025-11-02,2025-11-08,7,Core Development,Backend Team,No,4.1.1,Complete,100%,Intelligent proposal scoring and ranking (implemented)
4.6,Communication Manager Agent,2025-11-03,2025-11-08,6,Core Development,Backend Team,No,"4.1.2,4.5",Complete,100%,Automated client communications and email generation
4.7,Error Monitor Agent,2025-11-04,2025-11-08,5,Core Development,Backend Team,No,4.2,Complete,100%,Self-healing error detection with retry logic and alerting
4.8,Agent Coordination Layer,2025-11-05,2025-11-08,4,Core Development,System Architect,No,"4.2,4.3,4.4",Complete,100%,"MessageBus, HandoffManager, TaskQueue (BullMQ), WorkflowStateMachine"
4.9,Test Infrastructure Setup,2025-11-02,2025-11-08,7,Core Development,DevOps Team,No,3,In Progress,35%,Vitest + TypeScript test runner (38+ test suites - failures blocking coverage)
4.10,Phase 2 Integration Testing,2025-11-09,2025-11-15,7,Core Development,QA Team,No,"4.2,4.3,4.4,4.5,4.6,4.7",In Progress,35%,Agent communication validation (blocked by test failures)
5,PHASE 2 MILESTONE: CORE AI AGENTS OPERATIONAL,2025-11-15,2025-11-15,1,Core Development,Project Manager,Yes,4.10,In Progress,75%,✅ 6 agents implemented ✅ MCP servers ready ⚠️ Tests need stabilization
6,PHASE 3: ADVANCED WORKFLOW & AUTOMATION,2025-11-03,2025-11-22,20,Advanced Development,Development Team,Yes,5,In Progress,80%,Complete automated RFP workflow (coordination layer complete)
6.1,Workflow Orchestration System,2025-11-06,2025-11-08,3,Advanced Development,System Architect,No,"4.2,4.3,4.4",Complete,100%,State machine (11 states) and task coordination operational
6.2,Background Job Processing,2025-11-07,2025-11-08,2,Advanced Development,DevOps Team,No,6.1,Complete,100%,BullMQ + Redis task queue with priority levels
6.3,Message Bus Implementation,2025-11-05,2025-11-08,4,Advanced Development,Backend Team,No,4.2,Complete,100%,Event-driven A2A communication (7 message types)
6.4,Handoff Manager,2025-11-06,2025-11-08,3,Advanced Development,Backend Team,No,6.3,Complete,100%,Inter-agent task delegation system
6.5,Chat Agent Service,2025-11-08,2025-11-15,8,Advanced Development,Backend Team,No,"4.2,6.1",Complete,100%,Chat interface to agent system integration
6.6,End-to-End Workflow Testing,2025-11-16,2025-11-22,7,Advanced Development,QA Team,No,"6.1,6.2,6.3,6.4,6.5",Planned,0%,Complete RFP flow validation
7,PHASE 3 MILESTONE: COMPLETE AI SYSTEM LIVE,2025-11-22,2025-11-22,1,Advanced Development,Project Manager,Yes,6.6,In Progress,80%,✅ All 6 agents working ✅ Coordination complete ⏳ E2E testing pending
8,PHASE 4: USER INTERFACE & EXPERIENCE,2025-11-10,2025-11-23,14,Frontend Development,Frontend Team,Yes,7,In Progress,65%,Complete user-facing application
8.1,Authenticated User Interface,2025-10-20,2025-10-25,6,Frontend Development,Frontend Team,No,2.1,Complete,100%,Secure login and user dashboard with Clerk integration
8.2,Real-time Status Updates,2025-10-26,2025-11-01,7,Frontend Development,Frontend Team,No,8.1,Complete,100%,Live quote and request tracking with Supabase realtime
8.3,Request Submission Workflow,2025-11-02,2025-11-05,4,Frontend Development,Frontend Team,No,8.2,Complete,100%,User-friendly RFP creation (4-step form with validation)
8.4,Quote Review & Comparison UI,2025-11-06,2025-11-08,3,Frontend Development,Frontend Team,No,8.3,Complete,100%,Proposal viewing with quote cards and comparison
8.5,Workflow Visualization,2025-11-08,2025-11-10,3,Frontend Development,Frontend Team,No,6.1,Complete,100%,Real-time workflow state display component
8.6,UI/UX Polish & Accessibility,2025-11-11,2025-11-15,5,Frontend Development,Frontend Team,No,8.4,Complete,100%,Professional interface and WCAG 2.1 Level A compliance
8.7,UI Component Library,2025-10-25,2025-11-08,15,Frontend Development,Frontend Team,No,2.1,Complete,100%,JetVision-branded reusable components (PR #8 rebased)
8.8,ChatKit Frontend Integration,2025-11-08,2025-11-08,1,Frontend Development,Frontend Team,No,"8.1,6.5",Complete,100%,Chat page with ChatKit CDN integration (PR #40 clean extraction)
8.9,Quote Review & PDF Generation,2025-11-16,2025-11-23,8,Frontend Development,Full Stack Team,No,8.4,In Progress,40%,Proposal viewing with PDF download (PDF generation pending)
8.10,Frontend Testing Suite,2025-11-15,2025-11-20,6,Frontend Development,QA Team,No,8.6,Partial,60%,Playwright E2E tests written but not fully executed
9,PHASE 4 MILESTONE: USER INTERFACE COMPLETE,2025-11-23,2025-11-23,1,Frontend Development,Project Manager,Yes,"8.6,8.9,8.10",In Progress,65%,✅ ChatKit ready ✅ UI components complete ⏳ PDF generation & chat integration pending
10,PHASE 5: QUALITY ASSURANCE & OPTIMIZATION,2025-11-24,2025-12-07,14,Testing & QA,QA Team,Yes,9,In Progress,35%,Production-ready quality
10.1,Comprehensive Test Coverage,2025-11-09,2025-12-07,29,Testing & QA,QA Team,No,9,In Progress,35%,Target 75% coverage (currently blocked by test failures)
10.2,TypeScript Error Cleanup,2025-11-09,2025-11-16,8,Testing & QA,Backend Team,No,4.9,Planned,0%,Resolve 45+ TypeScript errors (Supabase types, agent undefined handling)
10.3,Test Suite Stabilization,2025-11-09,2025-11-16,8,Testing & QA,QA Team,No,10.2,Planned,0%,Fix test data for strict Zod schemas (4 email API tests failing)
10.4,Load & Performance Testing,2025-11-24,2025-11-30,7,Testing & QA,QA Team,No,10.1,Planned,0%,100+ concurrent user validation
10.5,API Performance Optimization,2025-12-01,2025-12-03,3,Testing & QA,Backend Team,No,10.4,Planned,0%,Sub-2 second response times
10.6,Database Query Optimization,2025-12-04,2025-12-05,2,Testing & QA,Backend Team,No,10.5,Planned,0%,Efficient data access patterns with indexes
10.7,Security Audit & Penetration Testing,2025-12-06,2025-12-06,1,Testing & QA,Security Team,No,10.6,Planned,0%,Vulnerability assessment and fixes
10.8,Bug Fix Sprint,2025-12-07,2025-12-07,1,Testing & QA,All Teams,No,10.7,Planned,0%,Issue resolution from testing
11,PHASE 5 MILESTONE: PRODUCTION-READY QUALITY,2025-12-07,2025-12-07,1,Testing & QA,Project Manager,Yes,10.8,Planned,0%,✓ 75%+ coverage ✓ TypeScript errors resolved ✓ Performance optimized
12,PHASE 6: PRODUCTION DEPLOYMENT PREP,2025-12-08,2025-12-21,14,Deployment,DevOps Team,Yes,11,In Progress,50%,Launch-ready infrastructure
12.1,Monitoring & Alerting Setup,2025-11-08,2025-11-15,8,Deployment,DevOps Team,No,11,In Progress,50%,Sentry error tracking and dashboards (configured but not validated)
12.2,CI/CD Pipeline Configuration,2025-10-28,2025-11-08,12,Deployment,DevOps Team,No,2.1,Complete,100%,GitHub Actions workflows with pre-commit/pre-push hooks operational
12.3,Vercel Deployment,2025-10-25,2025-11-01,7,Deployment,DevOps Team,No,2.1,Complete,100%,Next.js app deployed to Vercel (active)
12.4,Supabase Production Setup,2025-11-01,2025-11-08,8,Deployment,DevOps Team,No,2.6,Complete,100%,Database migrations applied to production instance
12.5,Staging Environment Deployment,2025-12-08,2025-12-10,3,Deployment,DevOps Team,No,12.2,Planned,0%,Pre-production environment setup
12.6,User Acceptance Testing (UAT),2025-12-11,2025-12-14,4,Deployment,Business Team,No,12.5,Planned,0%,Stakeholder validation on staging
12.7,Production Deployment Preparation,2025-12-15,2025-12-18,4,Deployment,DevOps Team,No,12.6,Planned,0%,Final environment configuration (Redis, MCP credentials)
12.8,Pre-Launch Checklist & Validation,2025-12-19,2025-12-21,3,Deployment,All Teams,No,12.7,Planned,0%,Go/no-go decision gate
13,PHASE 6 MILESTONE: READY FOR LAUNCH,2025-12-21,2025-12-21,1,Deployment,Project Manager,Yes,12.8,Planned,0%,✓ Monitoring live ✓ UAT passed ✓ Infrastructure validated
14,PHASE 7: PRODUCTION LAUNCH,2025-12-22,2025-12-28,7,Launch,All Teams,Yes,13,Planned,0%,System live in production
14.1,Production Deployment,2025-12-22,2025-12-22,1,Launch,DevOps Team,No,13,Planned,0%,Go-live to production environment
14.2,Launch Day Monitoring,2025-12-22,2025-12-22,1,Launch,All Teams,No,14.1,Planned,0%,24/7 team coverage
14.3,Early User Onboarding,2025-12-23,2025-12-25,3,Launch,Support Team,No,14.2,Planned,0%,Pilot user group activation
14.4,Performance Monitoring & Tuning,2025-12-23,2025-12-28,6,Launch,DevOps Team,No,14.2,Planned,0%,Real-world optimization
14.5,User Feedback Collection,2025-12-26,2025-12-28,3,Launch,Product Team,No,14.3,Planned,0%,Gather early user insights
14.6,Issue Triage & Hot Fixes,2025-12-22,2025-12-28,7,Launch,Development Team,No,14.1,Planned,0%,Rapid response to production issues
15,PROJECT MILESTONE: PRODUCTION LAUNCH COMPLETE,2025-12-28,2025-12-28,1,Launch,Project Manager,Yes,"14.4,14.5,14.6",Planned,0%,✓ System live ✓ Users onboarded ✓ Stable operation
16,POST-LAUNCH SUPPORT & ITERATION,2025-12-29,2026-01-04,7,Post-Launch,All Teams,No,15,Planned,0%,Continuous improvement
16.1,Week 1 Performance Review,2025-12-29,2026-01-04,7,Post-Launch,All Teams,No,15,Planned,0%,Metrics analysis and optimization
16.2,Feature Enhancement Planning,2025-12-29,2026-01-04,7,Post-Launch,Product Team,No,15,Planned,0%,Roadmap for future iterations
17,PROJECT COMPLETION & HANDOFF,2026-01-04,2026-01-04,1,Closure,Project Manager,Yes,"16.1,16.2",Planned,0%,✓ Handoff to operations team
BACKLOG.1,PR Review & Merge Coordination,,,Ongoing,Backlog,Development Team,No,,,In Progress,80%,"PR #40 (ChatKit), PR #39 (Linear automation), PR #8 (UI components), PR #11 (API routes) - awaiting review"
BACKLOG.2,TypeScript Error Resolution,,,Est. 8 days,Backlog,Backend Team,No,,,Planned,0%,Systematic cleanup of 45+ TypeScript errors (Supabase types, agent undefined handling, component props)
BACKLOG.3,Test Data Updates,,,Est. 5 days,Backlog,QA Team,No,,,Planned,0%,Update test data to match strict Zod validation schemas (4 email API tests failing)
BACKLOG.4,Chat UI Integration,,,Est. 7 days,Backlog,Frontend Team,No,,,Planned,0%,Wire ChatKit interface to live APIs and remove mock workflows
BACKLOG.5,MCP Credential Validation,,,Est. 3 days,Backlog,DevOps Team,No,,,Planned,0%,Obtain and validate Avinode/Gmail/Sheets API credentials in production
BACKLOG.6,PR #6 Investigation,,,Est. 2 days,Backlog,Development Team,No,,,Planned,0%,Determine if Avinode MCP PR #6 has unique features vs main branch
